# Project Timeline
#WIDTH: 15,35,12,14,14,28,24,14
#ALIGN: left,left,center,center,center,left,left,center
Phase,Task,Duration,Start Date,End Date,Dependencies,Owner,Status
Phase 1,Project Kickoff & Stakeholder Alignment,1 day,2026-01-05,2026-01-05,None,Project Manager,Not Started
Phase 1,AWS Account Access & IAM Permissions Confirmed,1 day,2026-01-05,2026-01-05,Project Kickoff & Stakeholder Alignment,Cloud Engineer,Not Started
Phase 1,Current State Assessment & Gap Analysis,5 days,2026-01-06,2026-01-12,AWS Account Access & IAM Permissions Confirmed,Solution Architect,Not Started
Phase 1,Architecture Design Document & ADRs,10 days,2026-01-06,2026-01-19,AWS Account Access & IAM Permissions Confirmed,Solution Architect,Not Started
Phase 1,AWS Landing Zone & VPC Provisioning,5 days,2026-01-06,2026-01-12,AWS Account Access & IAM Permissions Confirmed,Cloud Engineer,Not Started
Phase 1,Cognito User Pool Design & Post-Confirmation Lambda,5 days,2026-01-13,2026-01-19,Architecture Design Document & ADRs,Cloud Engineer,Not Started
Phase 1,CTO Sign-Off on Cognito User Pool,1 day,2026-01-20,2026-01-20,Cognito User Pool Design & Post-Confirmation Lambda,Solution Architect,Not Started
Phase 1,DynamoDB Schema & Quota Enforcement Tables,5 days,2026-01-13,2026-01-19,Architecture Design Document & ADRs,Cloud Engineer,Not Started
Phase 1,API Gateway HTTP API v2 & Lambda Route Stubs,5 days,2026-01-20,2026-01-26,DynamoDB Schema & Quota Enforcement Tables,Cloud Engineer,Not Started
Phase 1,Secrets Manager & KMS Key Policy Setup,3 days,2026-01-20,2026-01-22,AWS Landing Zone & VPC Provisioning,Security Engineer,Not Started
Phase 1,CloudTrail & GuardDuty Enablement,2 days,2026-01-21,2026-01-22,AWS Landing Zone & VPC Provisioning,Security Engineer,Not Started
Phase 1,CLI Authentication Subcommands (login/logout/refresh),5 days,2026-01-20,2026-01-26,Cognito User Pool Design & Post-Confirmation Lambda,Solutions Engineer,Not Started
Phase 1,Foundation Infrastructure Acceptance Report,2 days,2026-01-27,2026-01-28,API Gateway HTTP API v2 & Lambda Route Stubs; CTO Sign-Off on Cognito User Pool,Project Manager,Not Started
Phase 2,Docker Image Build & ECR Repository Setup,5 days,2026-02-02,2026-02-06,Foundation Infrastructure Acceptance Report,DevOps Engineer,Not Started
Phase 2,Strands Agent Graph Design & Inter-Agent Contracts,5 days,2026-02-02,2026-02-06,Foundation Infrastructure Acceptance Report,Solution Architect,Not Started
Phase 2,AgentCore Runtime Registration — All 5 Agents,5 days,2026-02-09,2026-02-13,Docker Image Build & ECR Repository Setup; Strands Agent Graph Design & Inter-Agent Contracts,Cloud Engineer,Not Started
Phase 2,eof-tools Container Image Build & Validation,5 days,2026-02-09,2026-02-13,Docker Image Build & ECR Repository Setup,DevOps Engineer,Not Started
Phase 2,Step Functions Orchestration State Machine,5 days,2026-02-16,2026-02-20,AgentCore Runtime Registration — All 5 Agents,Solution Architect,Not Started
Phase 2,Bedrock Model Integration & Prompt Templates,5 days,2026-02-09,2026-02-13,AgentCore Runtime Registration — All 5 Agents,ML/AI Engineer,Not Started
Phase 2,Complete CLI Package — All 14 Subcommands,10 days,2026-02-16,2026-02-27,CLI Authentication Subcommands (login/logout/refresh),Solutions Engineer,Not Started
Phase 2,All 11 Lambda API Routes — JWT-Protected & Quota-Enforced,10 days,2026-02-16,2026-02-27,Bedrock Model Integration & Prompt Templates,Solutions Engineer,Not Started
Phase 2,GitHub PAT Integration & Commit Workflow,5 days,2026-02-23,2026-02-27,All 11 Lambda API Routes — JWT-Protected & Quota-Enforced,Solutions Engineer,Not Started
Phase 2,CI/CD Pipeline — CodePipeline & CodeBuild,5 days,2026-02-23,2026-02-27,AgentCore Runtime Registration — All 5 Agents,DevOps Engineer,Not Started
Phase 2,Terraform IaC Full Platform Modules,10 days,2026-02-16,2026-02-27,Foundation Infrastructure Acceptance Report,DevOps Engineer,Not Started
Phase 2,Agent Integration Milestone Report,2 days,2026-03-02,2026-03-03,GitHub PAT Integration & Commit Workflow; Complete CLI Package — All 14 Subcommands,Project Manager,Not Started
Phase 3,Test Plan Development,3 days,2026-03-09,2026-03-11,Agent Integration Milestone Report,QA Engineer,Not Started
Phase 3,Token Usage Instrumentation — CLI & Admin API,3 days,2026-03-09,2026-03-11,Agent Integration Milestone Report,ML/AI Engineer,Not Started
Phase 3,Unit Test Suite — Greater Than 80% Coverage,5 days,2026-03-09,2026-03-13,Test Plan Development,Solutions Engineer,Not Started
Phase 3,Integration Tests — All 12 Artifact Types,5 days,2026-03-09,2026-03-13,Test Plan Development,QA Engineer,Not Started
Phase 3,Load Testing — 200 Solutions/Month Throughput,3 days,2026-03-16,2026-03-18,Unit Test Suite — Greater Than 80% Coverage; Integration Tests — All 12 Artifact Types,Solutions Engineer,Not Started
Phase 3,Security Testing — IAM & OWASP API Top 10,5 days,2026-03-09,2026-03-13,Test Plan Development,Security Engineer,Not Started
Phase 3,UAT Coordination & Sign-Off,3 days,2026-03-16,2026-03-18,Integration Tests — All 12 Artifact Types; Security Testing — IAM & OWASP API Top 10,QA Engineer,Not Started
Phase 3,Green CloudWatch Metrics Baseline Dashboard,2 days,2026-03-19,2026-03-20,Load Testing — 200 Solutions/Month Throughput,DevOps Engineer,Not Started
Phase 3,Production Deployment — Full Platform in us-west-2,1 day,2026-03-23,2026-03-23,UAT Coordination & Sign-Off; Green CloudWatch Metrics Baseline Dashboard,Cloud Engineer,Not Started
Phase 3,Operational Runbooks Delivery,3 days,2026-03-19,2026-03-23,UAT Coordination & Sign-Off,Solutions Engineer,Not Started
Phase 3,As-Built Documentation Package,5 days,2026-03-16,2026-03-20,Agent Integration Milestone Report,Solution Architect,Not Started
Phase 3,Knowledge Transfer — Engineering Deep-Dive,1 day,2026-03-24,2026-03-24,Production Deployment — Full Platform in us-west-2,Solution Architect,Not Started
Phase 3,Knowledge Transfer — Pre-Sales Workflow Training,1 day,2026-03-25,2026-03-25,Knowledge Transfer — Engineering Deep-Dive,Project Manager,Not Started
Phase 3,Executive Sponsor Demonstration,1 day,2026-04-30,2026-04-30,Knowledge Transfer — Pre-Sales Workflow Training,Project Manager,Not Started
Hypercare,Hypercare Support — P1/P2 Incident Response,40 days,2026-03-26,2026-05-21,Production Deployment — Full Platform in us-west-2,Cloud Engineer,Not Started
Hypercare,Optimisation Recommendations & Phase 2 Roadmap,5 days,2026-05-14,2026-05-21,Hypercare Support — P1/P2 Incident Response,Solution Architect,Not Started
Hypercare,Project Closeout & BAU Handover,1 day,2026-05-22,2026-05-22,Optimisation Recommendations & Phase 2 Roadmap,Project Manager,Not Started
# Milestones
#WIDTH: 14,38,14,14,55,22,12,14
#ALIGN: left,left,center,center,left,left,center,center
Milestone ID,Milestone Name,Target Date,Phase,Success Criteria,Owner,Status,Actual Date
MS-001,Kickoff Complete,2026-01-05,Phase 1,Stakeholder alignment achieved; project charter acknowledged; CTO briefing scheduled; architecture design underway,Project Manager,Not Started,
MS-002,Foundation Live,2026-01-28,Phase 1,"Cognito User Pool live; API Gateway provisioned; DynamoDB tables operational; S3 and IAM baseline accepted; CTO sign-off on Cognito obtained",Cloud Engineer,Not Started,
MS-003,First End-to-End Generation,2026-02-13,Phase 2,At least one complete twelve-artifact solution bundle generated and validated through all five Bedrock AgentCore agents without manual intervention,Solution Architect,Not Started,
MS-004,Agent Integration Complete,2026-03-03,Phase 2,"All five agents registered in AgentCore Runtime; all fourteen CLI subcommands operational; all eleven API routes JWT-protected; eof-tools converters for all twelve artifact types validated",Solution Architect,Not Started,
MS-005,UAT Sign-Off,2026-03-18,Phase 3,"UAT completed and formally signed off by Marcus Patel, Daniel Park, and CTO; all P1 and P2 defects resolved",QA Engineer,Not Started,
MS-006,Green Baseline,2026-03-20,Phase 3,"CloudWatch metrics baseline certified green; per-solution Bedrock token spend at or below $5; P95 end-to-end latency under 60 minutes confirmed under 200 solutions/month load",DevOps Engineer,Not Started,
MS-007,Go-Live,2026-03-23,Phase 3,"Full platform deployed to production us-west-2; GitHub PAT integration live; CLI published to PyPI; all deliverables accepted by Marcus Patel and Daniel Park; CTO production sign-off obtained",Project Manager,Not Started,
MS-008,Executive Demo,2026-04-30,Phase 3,"Live demonstration to Sarah Lin (CRO) confirming 90% effort reduction and end-to-end generation under 60 minutes; executive sponsor presentation delivered and acknowledged",Project Manager,Not Started,
MS-009,Hypercare End,2026-05-22,Hypercare,"Eight-week hypercare period concluded; Optimisation Recommendations and Phase 2 Roadmap delivered and accepted; full BAU handover to PREDICTif operations team complete",Project Manager,Not Started,
# RACI Matrix
#WIDTH: 42,18,18,18,18,18,18
#ALIGN: left,center,center,center,center,center,center
Task/Deliverable,Vendor PM,Vendor Arch,Vendor Eng,Vendor QA,Client IT,Client PM
Project Kickoff & Stakeholder Alignment,R,C,I,I,C,C
Current State Assessment & Gap Analysis,I,R,C,I,C,C
Architecture Design Document & ADRs,C,R,C,I,C,I
AWS Landing Zone & IAM Baseline,I,A,R,I,C,I
Cognito User Pool Design & CTO Sign-Off,C,A,R,I,C,C
DynamoDB Schema & Quota Enforcement,I,A,R,I,C,I
API Gateway & Lambda Route Development,I,C,R,C,I,I
Secrets Manager & KMS Configuration,C,C,R,C,C,I
CloudTrail & GuardDuty Enablement,C,C,R,I,C,I
CLI Development — All 14 Subcommands,I,C,R,C,I,I
Strands Agent Graph Design,C,R,C,I,I,I
AgentCore Runtime Registration — 5 Agents,I,A,R,C,I,I
eof-tools Container Image Build & Validation,I,C,R,C,I,I
Step Functions Orchestration State Machine,I,A,R,C,I,I
Bedrock Model Integration & Retry Logic,I,A,R,C,I,I
GitHub PAT Integration & Commit Workflow,I,C,R,C,I,C
CI/CD Pipeline — CodePipeline & CodeBuild,I,C,R,C,I,I
Terraform IaC Full Platform Modules,I,C,R,C,I,I
Security Hardening & Secrets Manager,C,C,R,C,C,I
Token Usage Instrumentation,I,A,R,C,I,I
CloudWatch Dashboards & Alarms,I,C,R,C,I,I
Test Plan Development,C,C,C,R,I,C
Unit & Integration Testing,I,C,R,A,I,I
Load & Performance Testing,I,C,R,A,I,I
Security Testing — IAM & OWASP API Top 10,C,C,R,A,C,I
UAT Coordination & Sign-Off,A,C,C,R,R,A
Production Deployment,A,C,R,C,C,C
Operational Runbooks Development,C,C,R,I,C,A
Knowledge Transfer — Engineering Deep-Dive,C,R,C,I,R,C
Knowledge Transfer — Pre-Sales Workflow,A,C,C,I,I,R
Executive Sponsor Demonstration,A,R,C,I,I,C
Hypercare Support,A,C,R,C,I,C
Project Closeout & Phase 2 Roadmap,R,C,I,I,I,C
R = Responsible | A = Accountable | C = Consulted | I = Informed
# Communications Plan
#WIDTH: 28,15,40,45,22,18
#ALIGN: left,center,left,left,left,center
Meeting Type,Frequency,Participants,Purpose,Owner,Day/Time
Project Kickoff,Once,"All stakeholders; Amatra full delivery team; Marcus Patel; Sarah Lin; Daniel Park; CTO; Client IT Lead","Launch project; align on scope, RACI, governance, and communication cadence; confirm AWS account access and CTO briefing schedule",Project Manager,2026-01-05 09:00 PT
Weekly Status Call,Weekly,"Marcus Patel; Daniel Park; Project Manager; Vendor team leads","Review progress against plan; surface blockers and decisions; update RAID log; confirm next-week deliverables",Project Manager,Mondays 10:00 PT
Architecture Review Workshop,Once — Week 3,"Marcus Patel; CTO; Solution Architect; Cloud Engineer","Review and obtain CTO sign-off on Architecture Design Document, Cognito User Pool design, and ADRs",Solution Architect,2026-01-20 10:00 PT (3 hours)
Phase 1 Gate Review,Once — End of Week 4,"Marcus Patel; Daniel Park; Project Manager","Review Foundation Infrastructure Acceptance Report; confirm Phase 1 completion criteria; approve Phase 2 kickoff",Project Manager,2026-01-28 10:00 PT (1 hour)
Phase 2 Integration Checkpoint,Bi-weekly during Phase 2,"Marcus Patel; Solution Architect; Cloud Engineer; ML/AI Engineer","Review agent registration progress, eof-tools validation status, and integration risks; adjust sprint priorities",Solution Architect,Wednesdays 10:00 PT (Weeks 5–9)
Phase 2 Gate Review,Once — End of Week 9,"Marcus Patel; Daniel Park; Project Manager","Review Agent Integration Milestone Report; confirm all five agents live and end-to-end generation validated; approve Phase 3 kickoff",Project Manager,2026-03-03 10:00 PT (1 hour)
UAT Session,Once — Week 11,"Marcus Patel; Daniel Park; CTO; QA Engineer; Project Manager","Execute UAT scenarios across pre-sales and delivery artifact types; review defect log; obtain formal UAT sign-off",QA Engineer,2026-03-16 09:00 PT (4 hours)
Go-Live Readiness Review,Once — Week 12,"Marcus Patel; CTO; Sarah Lin; Project Manager; DevOps Engineer","Review green CloudWatch baseline, security attestation, and go-live readiness checklist; obtain CTO and executive sign-off for production deployment",Project Manager,2026-03-20 10:00 PT (1 hour)
Executive Sponsor Demonstration,Once — End of April 2026,"Sarah Lin (CRO); Marcus Patel; Daniel Park; Project Manager; Solution Architect","Deliver live end-to-end platform demonstration confirming 90% effort reduction and sub-60-minute generation; present Phase 2 roadmap",Project Manager,2026-04-30 10:00 PT (2 hours)
Hypercare Incident Escalation,As required,"Marcus Patel; Cloud Engineer; Project Manager","Notify and resolve P1/P2 incidents during eight-week hypercare period; confirm root cause and remediation steps",Cloud Engineer,Within 1 business hour of P1 detection
Monthly Executive Status Report,Monthly during Hypercare,"Sarah Lin; Marcus Patel; Project Manager","Report platform usage metrics, token spend vs budget, open defects, and Phase 2 readiness status",Project Manager,First Monday of each month
Project Closeout,Once — Week 20,"Marcus Patel; Daniel Park; CTO; Sarah Lin; Project Manager","Formal project closure; confirm BAU handover; accept Optimisation Recommendations and Phase 2 Roadmap; conclude hypercare",Project Manager,2026-05-22 10:00 PT (1 hour)
