# Project Timeline
#WIDTH: 15,35,12,14,14,40,24,14
#ALIGN: left,left,center,center,center,left,left,center
Phase,Task,Duration,Start Date,End Date,Dependencies,Owner,Status
Phase 1,Project Kickoff & Scope Alignment,1 day,2026-02-02,2026-02-02,None,Project Manager,Not Started
Phase 1,Current-State Assessment & Legacy CLI Workflow Documentation,3 days,2026-02-03,2026-02-05,Project Kickoff & Scope Alignment,Solution Architect,Not Started
Phase 1,eof-tools Module & Artifact Type Mapping,2 days,2026-02-03,2026-02-04,Project Kickoff & Scope Alignment,ML/AI Engineer,Not Started
Phase 1,AWS Cloud Readiness Assessment & us-west-2 Landing Zone Design,3 days,2026-02-05,2026-02-07,Current-State Assessment & Legacy CLI Workflow Documentation,Solution Architect,Not Started
Phase 1,DynamoDB Data & Quota Model Design,3 days,2026-02-05,2026-02-07,AWS Cloud Readiness Assessment & us-west-2 Landing Zone Design,Solution Architect,Not Started
Phase 1,Architecture Decision Record (ADR) Authoring,5 days,2026-02-05,2026-02-11,Current-State Assessment & Legacy CLI Workflow Documentation,Solution Architect,Not Started
Phase 1,AWS Foundation Provisioning (VPC; IAM; S3; CloudTrail; KMS),5 days,2026-02-09,2026-02-13,AWS Cloud Readiness Assessment & us-west-2 Landing Zone Design,DevOps Engineer,Not Started
Phase 1,Amazon Cognito User Pool Implementation (pending CTO sign-off),5 days,2026-02-09,2026-02-13,AWS Foundation Provisioning (VPC; IAM; S3; CloudTrail; KMS),Solutions Engineer,Not Started
Phase 1,API Gateway HTTP API v2 — 11 Lambda Routes & JWT Authoriser,5 days,2026-02-09,2026-02-13,Amazon Cognito User Pool Implementation (pending CTO sign-off),Solutions Engineer,Not Started
Phase 1,DynamoDB Tables Implementation (users; solutions; quotas; audit_events),4 days,2026-02-10,2026-02-13,DynamoDB Data & Quota Model Design,Solutions Engineer,Not Started
Phase 1,CloudWatch Dashboards & CloudTrail Audit Logging Baseline,3 days,2026-02-11,2026-02-13,AWS Foundation Provisioning (VPC; IAM; S3; CloudTrail; KMS),DevOps Engineer,Not Started
Phase 1,Security Hardening (Secrets Manager; GuardDuty; Security Hub),3 days,2026-02-11,2026-02-13,AWS Foundation Provisioning (VPC; IAM; S3; CloudTrail; KMS),Security Engineer,Not Started
Phase 1,Phase 1 Completion Report,1 day,2026-02-16,2026-02-16,DynamoDB Tables Implementation (users; solutions; quotas; audit_events),Project Manager,Not Started
Phase 2,Five-Agent Strands Multi-Agent Graph Design & Implementation,10 days,2026-02-17,2026-02-27,Phase 1 Completion Report,ML/AI Engineer,Not Started
Phase 2,Bedrock AgentCore Runtime Registration (Sonnet 4.6 + Haiku 4.5),5 days,2026-02-17,2026-02-21,Phase 1 Completion Report,ML/AI Engineer,Not Started
Phase 2,Docker Image Pipeline — eof-tools Baked Agent Image & ECR Push,7 days,2026-02-17,2026-02-25,Phase 1 Completion Report,DevOps Engineer,Not Started
Phase 2,Per-Artifact Validation Loop (format-check + LLM quality-check; 3 retries),8 days,2026-02-24,2026-03-05,Five-Agent Strands Multi-Agent Graph Design & Implementation,ML/AI Engineer,Not Started
Phase 2,eof-tools Converter Integration (DOCX; PPTX; XLSX across 12 artifact types),8 days,2026-02-24,2026-03-05,Docker Image Pipeline — eof-tools Baked Agent Image & ECR Push,Solutions Engineer,Not Started
Phase 2,Graded Artifact Delivery Policy Implementation,3 days,2026-03-03,2026-03-05,Per-Artifact Validation Loop (format-check + LLM quality-check; 3 retries),Solutions Engineer,Not Started
Phase 2,CLI Implementation (pip-installable; 14 subcommands; per-phase token usage),10 days,2026-03-02,2026-03-13,Bedrock AgentCore Runtime Registration (Sonnet 4.6 + Haiku 4.5),Solutions Engineer,Not Started
Phase 2,DynamoDB Atomic Quota Enforcement (per-user 10/month; global 1000/month),5 days,2026-03-02,2026-03-06,DynamoDB Tables Implementation (users; solutions; quotas; audit_events),Solutions Engineer,Not Started
Phase 2,GitHub Integration — PAT-Based Automated Artifact Commit Pipeline,4 days,2026-03-05,2026-03-10,DynamoDB Atomic Quota Enforcement (per-user 10/month; global 1000/month),Solutions Engineer,Not Started
Phase 2,Terraform IaC Automation Bundle (all infrastructure modules),8 days,2026-03-02,2026-03-11,AWS Foundation Provisioning (VPC; IAM; S3; CloudTrail; KMS),DevOps Engineer,Not Started
Phase 2,CI/CD Pipeline (GitHub Actions; Docker build; ECR push; Lambda deploy),5 days,2026-03-09,2026-03-13,Terraform IaC Automation Bundle (all infrastructure modules),DevOps Engineer,Not Started
Phase 2,CloudWatch Per-Phase Token Usage Metrics & X-Ray Tracing,4 days,2026-03-09,2026-03-13,CI/CD Pipeline (GitHub Actions; Docker build; ECR push; Lambda deploy),DevOps Engineer,Not Started
Phase 3,Test Plan Authoring (unit; integration; E2E; performance; security; UAT),3 days,2026-03-16,2026-03-18,CI/CD Pipeline (GitHub Actions; Docker build; ECR push; Lambda deploy),QA Engineer,Not Started
Phase 3,End-to-End Artifact Validation (all 12 artifact types; format-check + quality-check),5 days,2026-03-16,2026-03-20,Per-Artifact Validation Loop (format-check + LLM quality-check; 3 retries),QA Engineer,Not Started
Phase 3,Load & Performance Testing (200 solutions/month; per-solution model cost validation),4 days,2026-03-19,2026-03-24,End-to-End Artifact Validation (all 12 artifact types; format-check + quality-check),QA Engineer,Not Started
Phase 3,Security Testing (JWT auth; quota bypass; PAT protection; IAM review),4 days,2026-03-19,2026-03-24,End-to-End Artifact Validation (all 12 artifact types; format-check + quality-check),Security Engineer,Not Started
Phase 3,DynamoDB PITR Restore Test & Resilience Validation,2 days,2026-03-23,2026-03-24,Load & Performance Testing (200 solutions/month; per-solution model cost validation),DevOps Engineer,Not Started
Phase 3,UAT Coordination & Executive Demo (Marcus Patel; Daniel Park; Sarah Lin),3 days,2026-03-24,2026-03-26,Load & Performance Testing (200 solutions/month; per-solution model cost validation),Project Manager,Not Started
Phase 3,CloudWatch Green Metrics Baseline Confirmation,2 days,2026-03-25,2026-03-26,CloudWatch Per-Phase Token Usage Metrics & X-Ray Tracing,DevOps Engineer,Not Started
Phase 3,CTO Sign-Off on Production Cognito User Pool & Deployment,1 day,2026-03-27,2026-03-27,UAT Coordination & Executive Demo (Marcus Patel; Daniel Park; Sarah Lin),Project Manager,Not Started
Phase 3,Operational Runbook Authoring (quota reset; agent failure; Bedrock throttle; GitHub push),4 days,2026-03-23,2026-03-26,End-to-End Artifact Validation (all 12 artifact types; format-check + quality-check),Solution Architect,Not Started
Phase 3,Knowledge Transfer Session 1 — CLI & API (14 subcommands; 11 routes),1 day,2026-03-30,2026-03-30,Operational Runbook Authoring (quota reset; agent failure; Bedrock throttle; GitHub push),Solution Architect,Not Started
Phase 3,Knowledge Transfer Session 2 — Agent Operations (5-agent graph; token usage; quotas),1 day,2026-03-31,2026-03-31,Knowledge Transfer Session 1 — CLI & API (14 subcommands; 11 routes),ML/AI Engineer,Not Started
Phase 3,As-Built Documentation (architecture diagrams; ADRs; configuration inventory),4 days,2026-03-23,2026-03-26,End-to-End Artifact Validation (all 12 artifact types; format-check + quality-check),Solution Architect,Not Started
Phase 3,Optimization Recommendations — Phase 2 Scope Backlog,2 days,2026-03-30,2026-03-31,As-Built Documentation (architecture diagrams; ADRs; configuration inventory),Solution Architect,Not Started
Phase 3,Production Go-Live Execution & Cutover,1 day,2026-04-01,2026-04-01,CTO Sign-Off on Production Cognito User Pool & Deployment,Solutions Engineer,Not Started
Phase 3,Project Closeout Report,1 day,2026-04-02,2026-04-02,Production Go-Live Execution & Cutover,Project Manager,Not Started
Hypercare,Hypercare Support (Weeks 13–16),20 days,2026-04-06,2026-04-30,Production Go-Live Execution & Cutover,Solutions Engineer,Not Started
# Milestones
#WIDTH: 14,42,14,16,60,24,12,14
#ALIGN: left,left,center,center,left,left,center,center
Milestone ID,Milestone Name,Target Date,Phase,Success Criteria,Owner,Status,Actual Date
MS-001,Project Kickoff Complete,2026-02-02,Phase 1,All stakeholders aligned; project charter confirmed; scope and success criteria signed off by Marcus Patel and Sarah Lin,Project Manager,Not Started,
MS-002,AWS Foundation Live,2026-02-13,Phase 1,us-west-2 VPC/IAM/S3/CloudTrail/KMS operational; CTO sign-off gate for Cognito initiated; JWT-authenticated API call demonstrable,Solution Architect,Not Started,
MS-003,Identity & API Ready,2026-02-16,Phase 1,Cognito user pool live; API Gateway HTTP API v2 with 11 routes operational; DynamoDB schema deployed; ADR and Phase 1 Completion Report accepted by Marcus Patel,Project Manager,Not Started,
MS-004,First Agent Generating,2026-02-27,Phase 2,Single Strands agent producing one artifact type end-to-end in Bedrock AgentCore Runtime with format-check passing,ML/AI Engineer,Not Started,
MS-005,Presales Bundle Automated,2026-03-13,Phase 2,All five presales artifacts generated end-to-end via CLI with format-check and LLM quality-check passing; Docker image pipeline green; quota enforcement verified; GitHub commit confirmed,ML/AI Engineer,Not Started,
MS-006,All 12 Artifacts Validated,2026-03-20,Phase 3,Full twelve-artifact solution bundle passes format-check and LLM quality-check (≤ 3 retries per artifact); CloudWatch baseline green; load test at 200 solutions/month passed with per-solution Bedrock spend < $5,QA Engineer,Not Started,
MS-007,UAT Sign-Off & Executive Demo,2026-03-26,Phase 3,All critical UAT scenarios passed; executive demonstration delivered to Sarah Lin; UAT sign-off obtained from Marcus Patel; CTO sign-off on production deployment confirmed,Project Manager,Not Started,
MS-008,Production Go-Live,2026-04-01,Phase 3,Production deployment complete; all 11 API routes smoke-tested with live JWT tokens; GitHub commit pipeline delivering to production repository; CloudWatch alarms active and routing to Daniel Park,Solutions Engineer,Not Started,
MS-009,Hypercare Conclusion & BAU Handover,2026-04-30,Hypercare,Four-week hypercare period concluded; all runbooks validated in production; platform ownership fully transferred to Daniel Park; no open P1 or P2 incidents,Project Manager,Not Started,
# RACI Matrix
#WIDTH: 50,16,16,16,16,16,16,16,16
#ALIGN: left,center,center,center,center,center,center,center,center
Task/Deliverable,Vendor PM,Vendor Architect,Vendor Engineer,Vendor QA,Client IT Lead (Daniel Park),Client CTO,Marcus Patel,Sarah Lin
Project Kickoff & Scope Alignment,A,R,I,I,C,I,R,C
Current-State Assessment & ADR,C,A,R,I,C,I,R,I
AWS Foundation Provisioning (us-west-2),C,A,R,I,R,I,C,I
Amazon Cognito User Pool Provisioning,C,A,R,I,C,A,R,I
API Gateway & Lambda Route Implementation,C,C,A,I,I,I,R,I
DynamoDB Schema & Quota Enforcement,C,A,R,I,C,I,R,I
Strands Multi-Agent Graph Implementation,C,A,R,C,I,I,C,I
Bedrock AgentCore Runtime Registration,C,A,R,I,I,I,C,I
eof-tools Converter Integration,C,C,A,C,I,I,R,I
CLI Implementation (14 subcommands),C,C,A,C,I,I,R,I
GitHub Integration (PAT Commit Pipeline),C,C,A,I,C,I,R,I
Terraform IaC Automation Bundle,C,A,R,C,I,I,C,I
Security Hardening & GuardDuty Setup,C,A,R,C,R,C,C,I
CI/CD Pipeline Implementation,C,C,A,C,C,I,C,I
Per-Artifact Validation Loop (3-retry logic),C,C,R,A,C,I,R,I
End-to-End Artifact Validation Testing,C,C,R,A,C,I,R,I
Load & Performance Testing,C,C,R,A,I,I,C,I
Security Testing,C,A,R,C,R,C,C,I
UAT Coordination & Executive Demo,A,C,C,C,C,C,R,R
CTO Sign-Off (Cognito and Production),I,C,I,I,C,A,R,C
Runbook Authoring,C,R,R,C,C,I,A,I
Knowledge Transfer Delivery,A,R,R,I,C,I,R,I
As-Built Documentation,C,A,R,C,C,I,R,I
Project Go-Live Approval,A,C,I,C,C,A,R,R
Hypercare Support Management,A,C,R,I,R,I,C,I
Project Closeout Report,A,C,I,I,C,I,C,R
R = Responsible | A = Accountable | C = Consulted | I = Informed
# Communications Plan
#WIDTH: 30,15,50,55,24,22
#ALIGN: left,center,left,left,left,center
Meeting Type,Frequency,Participants,Purpose,Owner,Day/Time
Project Kickoff,Once,All stakeholders; EO Framework vendor team; Marcus Patel; Daniel Park; Sarah Lin; CTO,Launch project; align on scope; confirm RACI; review success criteria and governance cadence,Project Manager,2026-02-02 09:00 PT
Weekly Status Call,Weekly,"Vendor PM; Marcus Patel; Daniel Park; relevant vendor leads",Review progress against project plan; surface blockers and decisions; update milestone status,Project Manager,Mondays 10:00 PT
Architecture Review Workshop,Once (Week 2),"Solution Architect; Marcus Patel; Daniel Park; ML/AI Engineer",Review and approve ADR; confirm us-west-2 landing zone design and DynamoDB data model,Solution Architect,2026-02-11 10:00 PT (3 hours)
Phase 1 Gate Review,Once (Week 4),"Vendor PM; Solution Architect; Marcus Patel; Daniel Park",Review Phase 1 completion criteria; confirm Cognito and API Gateway are live; approve Phase 2 start,Project Manager,2026-02-16 10:00 PT (1 hour)
Phase 2 Mid-Sprint Check-In,Bi-weekly,"Vendor PM; ML/AI Engineer; Solutions Engineer; Marcus Patel",Review agent build progress; confirm eof-tools integration status; address quota and CLI blockers,Project Manager,Alternating Mondays 14:00 PT
Phase 2 Gate Review,Once (Week 9),"Vendor PM; Solution Architect; Marcus Patel; Daniel Park",Review Phase 2 completion criteria; confirm all five agents operational and CLI deployed; approve Phase 3 start,Project Manager,2026-03-13 10:00 PT (1 hour)
UAT Session & Executive Demo,Once (Week 11),"Vendor PM; all vendor team leads; Marcus Patel; Daniel Park; Sarah Lin",Conduct UAT across twelve artifact types; present load test results; deliver executive demonstration for go-live approval,Project Manager,2026-03-24 10:00 PT (4 hours)
Go-Live Readiness Review,Once (Week 12),"Vendor PM; Solution Architect; Marcus Patel; Daniel Park; CTO",Present go-live readiness checklist; confirm all criteria satisfied; obtain CTO and Marcus Patel sign-off for production deployment,Project Manager,2026-03-27 10:00 PT (1 hour)
Hypercare Incident Escalation,As required,"Vendor engineer on-call; Marcus Patel; Daniel Park",Notify and resolve P1 incidents (platform down / quota enforcement broken) during hypercare period,Solutions Engineer,Within 2 business hours of detection
Hypercare Weekly Check-In,Weekly (Weeks 13–16),"Vendor PM; Solutions Engineer; Daniel Park; Marcus Patel",Review open hypercare issues; confirm platform health metrics; track any outstanding runbook gaps,Project Manager,Mondays 10:00 PT
Project Closeout Meeting,Once (Week 16),"Vendor PM; Solution Architect; Marcus Patel; Daniel Park; Sarah Lin",Formal project closure; BAU handover confirmation; Phase 2 scope backlog review; final invoice reconciliation,Project Manager,2026-04-30 10:00 PT (1 hour)
